# AirTicetingSyste

How a schedule from MS Project changed from version to version. A marks actual dates.

## Version 1 (saved 2024-02-28)

Note of the change: SPM LAB

| ID | WBS | Task | Duration | Start | Finish | Predecessors | Complete | Total float | Constraint |
| --- | --- | --- | --- | --- | --- | --- | --- | --- | --- |
| 1 |  | Project Start | 0d | 2023-10-18 | 2023-10-18 |  |  | 65d | start no earlier than 2023-10-18 |
| 2 | 2 | **Planning** | 8d | 2023-10-18 A | 2023-10-27 A |  | 100% |  |  |
| 3 |  | Project Selection | 3d | 2023-10-18 A | 2023-10-20 A |  | 100% |  |  |
| 4 |  | Literature Review | 5d | 2023-10-23 A | 2023-10-27 A | 3 | 100% |  |  |
| 5 | 3 | **Analysis** | 9d | 2023-10-30 A | 2023-11-09 A | 2 | 100% |  |  |
| 6 |  | Requirements Gathering | 2d | 2023-10-30 A | 2023-10-31 A | 4 | 100% |  |  |
| 7 |  | Feasibility Analysis | 4d | 2023-11-01 A | 2023-11-06 A | 6 | 100% |  |  |
| 8 |  | Algorithm Selection | 3d | 2023-11-07 A | 2023-11-09 A | 7 | 100% |  |  |
| 9 | 4 | **Design** | 7d | 2023-11-10 A | 2023-11-20 A | 5 | 100% |  |  |
| 10 |  | Database Design | 3d | 2023-11-10 A | 2023-11-14 A | 8 | 100% |  |  |
| 11 |  | Prototype Building | 4d | 2023-11-15 A | 2023-11-20 A | 10 | 100% |  |  |
| 12 | 5 | **Implementation** | 32d | 2023-11-21 A | 2024-01-03 | 9 | 77% | 0d |  |
| 13 |  | Front End Development | 10d | 2023-11-21 A | 2023-12-04 A | 11 | 100% |  |  |
| 14 |  | EDA | 2d | 2023-12-05 A | 2023-12-06 A | 13 | 100% |  |  |
| 15 |  | Feature Engineering | 3d | 2023-12-07 A | 2023-12-11 A | 14 | 100% |  |  |
| 16 |  | Backend Development | 12d | 2023-12-05 A | 2023-12-20 A | 13 | 100% |  |  |
| 17 |  | Algorithm Modeling | 8d | 2023-12-21 A | 2024-01-01 | 15, 16 | 20% | 0d |  |
| 18 |  | Model Integration | 2d | 2024-01-02 | 2024-01-03 | 16, 17 |  | 0d |  |
| 19 | 6 | **Testing** | 9d | 2024-01-04 | 2024-01-16 | 12 |  | 0d |  |
| 20 |  | Unit Testing | 5d | 2024-01-04 | 2024-01-10 |  |  | 0d |  |
| 21 |  | Integration Testing | 2d | 2024-01-11 | 2024-01-12 | 20 |  | 0d |  |
| 22 |  | System Testing | 2d | 2024-01-15 | 2024-01-16 | 21 |  | 0d |  |
| 23 |  | Project End | 0d | 2024-01-16 | 2024-01-16 | 19 |  | 0d | start no earlier than 2024-01-16 |

## Version 2 (saved 2024-02-28)

Note of the change: SPM LAB

Last finish stays 2024-01-16. Complete tasks 11 → 10.

Changed:

| ID | Task | Finish | Complete | Total float | Other |
| --- | --- | --- | --- | --- | --- |
| 12 | **Implementation** |  | 77% → 50% | 0d → 2d |  |
| 16 | Backend Development | 2023-12-20 A → 2023-12-20 | 100% → 17% | none → 1.6d |  |
| 17 | Database Setup |  |  | 0d → 2d | was named Algorithm Modeling |
